# Planificación

Schedule from MS Project, 2014-03-18 to 2015-05-25, A marks actual dates.

## Calendars

- Estándar: Mon-Sun 09:00-13:00, 15:00-19:00. Exceptions (off unless hours are given): 2014-06-28 09:00-13:00, 15:00-19:00, 2014-10-25 09:00-13:00, 15:00-19:00, 2014-11-29 09:00-13:00, 15:00-19:00, 2015-01-03 09:00-13:00, 15:00-19:00, 2015-01-10 09:00-13:00, 15:00-19:00, 2015-02-14 09:00-13:00, 15:00-19:00.

## Resources

| Resource |
| --- |
| Facu |
| Paula |
| Florencia |
| Antonio |
| 100 |

## Schedule

| ID | WBS | Task | Type | Duration | Start | Finish | Predecessors | Complete | Constraint | Resources | Work | Actual work |
| --- | --- | --- | --- | --- | --- | --- | --- | --- | --- | --- | --- | --- |
| 1 | 1 | **Sprint 0** |  | 0d | 2014-03-18 A | 2014-06-03 A |  | 100% |  |  | 5800h | 5800h |
| 2 | 1.1 | **Realizar Propuesta Inicial** |  | 0d | 2014-03-18 A | 2014-04-08 A |  | 100% |  | Antonio; Facu; Florencia; Paula | 1344h | 1344h |
| 3 | 1.1.1 | Analizar la problematica y su contexto | milestone, manual | 7d | 2014-03-18 A | 2014-03-26 A |  | 100% | start no earlier than 2014-03-31 | Antonio; Facu; Florencia; Paula | 224h | 224h |
| 4 | 1.1.2 | Analizar viabilidad del proyecto | milestone, manual | 7d | 2014-03-18 A | 2014-03-26 A |  | 100% | start no earlier than 2014-03-31 | Antonio; Facu; Florencia; Paula | 224h | 224h |
| 5 | 1.1.3 | Definir propuesta de solucion | milestone, manual | 7d | 2014-03-18 A | 2014-03-26 A |  | 100% | start no earlier than 2014-03-31 | Antonio; Facu; Florencia; Paula | 224h | 224h |
| 6 | 1.1.4 | Preparar presentación | milestone, manual | 4d | 2014-03-31 A | 2014-04-03 A | 3FS+95.57d, 4FS+95.57d, 5FS+95.57d | 100% |  | Antonio; Facu; Florencia; Paula | 128h | 128h |
| 7 | 1.1.5 | Exponer | milestone, manual | 1d | 2014-04-08 A | 2014-04-08 A |  | 100% |  | Antonio; Facu; Florencia; Paula | 32h | 32h |
| 8 | 1.2 | **Realizar Calendarización** |  | 17d | 2014-04-15 A | 2014-05-07 A |  | 100% |  | Antonio; Facu; Florencia; Paula | 920h | 920h |
| 9 | 1.2.1 | Armar WBS | milestone, manual | 7d | 2014-04-15 A | 2014-04-23 A |  | 100% |  | Antonio; Facu; Florencia; Paula | 224h | 224h |
| 10 | 1.2.2 | Correccion WBS | milestone, manual | 0d | 2014-04-24 A | 2014-04-25 A | 9FS+95.57d | 100% |  | Antonio; Facu; Florencia; Paula | 64h | 64h |
| 11 | 1.2.3 | Armar calendario | milestone, manual | 7d | 2014-04-28 A | 2014-05-06 A | 10FS+95.57d | 100% |  | Antonio; Facu; Florencia; Paula | 224h | 224h |
| 12 | 1.3 | **Realizar Estudio Inicial** |  | 0d? | 2014-04-08 A | 2014-05-09 A | 2FS+95.57d | 100% |  | Antonio; Facu; Florencia; Paula | 2080h | 2080h |
| 13 | 1.3.1 | Analizar la problematica y su contexto | milestone, manual | 0d | 2014-04-09 A | 2014-04-28 A |  | 100% |  | Antonio; Facu; Florencia; Paula | 448h | 448h |
| 14 | 1.3.2 | Analizar soluciones existentes en el mercado | milestone, manual | 0d | 2014-04-09 A | 2014-04-10 A |  | 100% |  | Antonio; Facu; Florencia; Paula | 64h | 64h |
| 15 | 1.3.3 | Definir alcances | milestone, manual | 0d | 2014-04-09 A | 2014-04-17 A |  | 100% |  | Antonio; Facu; Florencia; Paula | 224h | 224h |
| 16 | 1.3.4 | Realizar analisis de Factibilidad | milestone, manual | 1d | 2014-04-08 A | 2014-04-09 A |  | 100% |  | Antonio; Facu; Florencia; Paula | 32h | 32h |
| 17 | 1.3.5 | Realizar Encuestas | milestone, manual | 0d | 2014-04-28 A | 2014-05-09 A |  | 100% | finish no earlier than 2014-05-09 | Antonio; Facu; Florencia; Paula | 320h | 320h |
| 18 | 1.3.6 | Estudiar dominio | milestone, manual | 7d | 2014-04-08 A | 2014-04-16 A |  | 100% |  | Antonio; Facu; Florencia; Paula | 224h | 224h |
| 19 | 1.4 | Realizar plan de configuración | milestone, manual | 7d | 2014-05-07 A | 2014-05-13 A |  | 100% |  | Florencia | 56h | 56h |
| 20 | 1.5 | **Realizar Plan de Riesgos** |  | 8d | 2014-05-13 A | 2014-05-20 A |  | 100% |  | Facu | 104h | 104h |
| 21 | 1.5.1 | Identificar, clasificar y priorizar riesgos | milestone, manual | 3d | 2014-05-13 A | 2014-05-15 A |  | 100% |  | Facu | 24h | 24h |
| 22 | 1.5.2 | Realizar plan mitigación | milestone, manual | 2d | 2014-05-16 A | 2014-05-19 A | 21FS+95.57d | 100% |  | Facu | 16h | 16h |
| 23 | 1.5.3 | Realizar plan de contingencia | milestone, manual | 2d | 2014-05-16 A | 2014-05-19 A | 21FS+95.57d | 100% |  | Facu | 16h | 16h |
| 24 | 1.6 | **Realizar Plan de Métricas** |  | 0d | 2014-05-20 A | 2014-05-26 A |  | 100% |  | Paula | 168h | 168h |
| 25 | 1.6.1 | Identificar metricas | milestone, manual | 7d | 2014-05-20 A | 2014-05-26 A |  | 100% |  | Paula | 56h | 56h |
| 26 | 1.6.2 | Definir responsables y método de medicion | milestone, manual | 7d | 2014-05-20 A | 2014-05-26 A |  | 100% |  | Paula | 56h | 56h |

| ID | WBS | Task | Type | Duration | Start | Finish | Predecessors | Complete | Actual finish | Constraint | Resources | Work | Actual work |
| --- | --- | --- | --- | --- | --- | --- | --- | --- | --- | --- | --- | --- | --- |
| 27 | 1.7 | **Realizar Plan de Testing** |  | 9d | 2014-05-20 A | 2014-05-28 A |  | 100% |  |  | Paula; Florencia | 232h | 232h |
| 28 | 1.7.1 | Definir tipos de pruebas | milestone, manual | 0d | 2014-05-20 A | 2014-05-28 A |  | 100% |  |  | Paula | 56h | 56h |
| 29 | 1.7.2 | Definir estrategia de prueba | milestone, manual | 0d | 2014-05-20 A | 2014-05-28 A |  | 100% |  |  | Paula | 56h | 56h |
| 30 | 1.7.3 | Definir nivel de cobertura | milestone, manual | 0d | 2014-05-20 A | 2014-05-28 A |  | 100% |  |  | Paula | 56h | 56h |
| 31 | 1.7.4 | Correcciones | milestone, manual | 1d | 2014-05-24 A | 2014-05-24 A |  | 100% |  |  | Florencia | 8h | 8h |
| 32 | 1.8 | Analizar Impacto Ambiental | milestone, manual | 7d | 2014-05-20 A | 2014-05-26 A |  | 100% |  |  | Antonio; Facu; Florencia; Paula | 224h | 224h |
| 33 | 1.9 | **Realizar Presentación de Estudio Inicial** |  | 7d | 2014-05-19 A | 2014-05-25 | 12FS+95.57d | 100% | 2014-05-27 |  | Antonio; Facu; Florencia; Paula | 448h | 448h |
| 34 | 1.9.1 | Preparar presentación | milestone, manual | 0d | 2014-05-19 A | 2014-05-21 A |  | 100% |  |  | Antonio; Facu; Florencia; Paula | 96h | 96h |
| 35 | 1.9.2 | Elaborar presentación | milestone, manual | 0d | 2014-05-22 A | 2014-05-24 A | 34FS+95.57d | 100% |  |  | Antonio; Facu; Florencia; Paula | 96h | 96h |
| 36 | 1.9.3 | Exponer | milestone, manual | 0d | 2014-05-27 A | 2014-05-27 A |  | 100% |  | start no earlier than 2014-05-27 | Antonio; Facu; Florencia; Paula | 32h | 32h |
| 37 | 1.10 | **Preparar Product Backlog** |  | 6d | 2014-05-29 A | 2014-06-03 A | 33FS+95.57d, 32FS+95.57d, 27FS+95.57d, 24FS+95.57d | 100% |  |  | Antonio; Paula | 96h | 96h |
| 38 | 1.10.1 | Identificar historias de usuario | milestone, manual | 0d | 2014-05-29 A | 2014-06-01 A |  | 100% |  |  |  |  |  |
| 39 | 1.10.2 | Priorizar historias de usuario | milestone, manual | 0d | 2014-05-29 A | 2014-06-01 A |  | 100% |  |  |  |  |  |
| 40 | 1.10.3 | Estimar historias de usuario | milestone, manual | 0d | 2014-05-29 A | 2014-06-01 A |  | 100% |  |  |  |  |  |
| 41 | 1.11 | **Realizar ERS** |  | 0d | 2014-05-29 A | 2014-05-31 A | 33FS+95.57d, 32FS+95.57d, 27FS+95.57d, 24FS+95.57d | 100% |  |  | Antonio; Facu; Florencia; Paula | 96h | 96h |
| 42 | 1.11.1 | Entrevistar expertos en dominio | milestone, manual | 0d | 2014-05-29 A | 2014-05-31 A |  | 100% |  |  |  |  |  |
| 43 | 1.11.2 | Identificar funcionalidades | milestone, manual | 0d | 2014-05-29 A | 2014-05-31 A |  | 100% |  |  |  |  |  |
| 44 | 1.11.3 | Especificar funcionalidades | milestone, manual | 0d | 2014-05-29 A | 2014-05-31 A |  | 100% |  |  |  |  |  |
| 45 | 1.11.4 | Definir reglas de negocio | milestone, manual | 0d | 2014-05-29 A | 2014-05-31 A |  | 100% |  |  |  |  |  |
| 46 | 1.12 | **Definir Metodología y Herramientas de Trabajo** |  | 0d | 2014-06-01 A | 2014-06-01 A | 41FS+95.57d | 100% |  |  | Antonio; Facu; Florencia; Paula | 32h | 32h |
| 47 | 1.12.1 | Definir y preparar entorno de trabajo | milestone, manual | 0d | 2014-06-01 A | 2014-06-01 A |  | 100% |  |  |  |  |  |
| 48 | 1.12.2 | Definir ciclo de vida del sw | milestone, manual | 0d | 2014-06-01 A | 2014-06-01 A |  | 100% |  |  |  |  |  |
| 49 | 2 | **Sprint 1** |  | 22d | 2014-06-07 A | 2014-06-28 A | 1FS+95.57d | 100% |  |  |  | 2560h | 2560h |
| 50 | 2.1 | Realizar Sprint Planning | milestone, manual | 1d | 2014-06-07 A | 2014-06-07 A |  | 100% |  |  | Antonio; Facu; Florencia; Paula | 32h | 32h |
| 51 | 2.2 | Investigar tecnologías de desarrollo | milestone, manual | 22d | 2014-06-07 A | 2014-06-28 A |  | 100% |  |  | Facu; Paula | 352h | 352h |

| ID | WBS | Task | Type | Duration | Start | Finish | Complete | Actual finish | Constraint | Resources | Work | Actual work |
| --- | --- | --- | --- | --- | --- | --- | --- | --- | --- | --- | --- | --- |
| 52 | 2.3 | **Registrar Edición** |  | 22d | 2014-06-07 A | 2014-06-28 A | 100% |  |  | Facu; Paula | 352h | 352h |
| 53 | 2.3.1 | Analizar y Especificar los requerimientos | milestone, manual | 1d | 2014-06-07 A | 2014-06-07 A | 100% |  |  |  |  |  |
| 54 | 2.3.2 | Diseñar Solución | milestone, manual | 1d | 2014-06-07 A | 2014-06-07 A | 100% |  |  |  |  |  |
| 55 | 2.3.3 | Desarrollar | milestone, manual | 1d | 2014-06-07 A | 2014-06-07 A | 100% |  |  |  |  |  |
| 56 | 2.3.4 | Diseño de UI | milestone, manual | 1d | 2014-06-07 A | 2014-06-07 A | 100% |  |  |  |  |  |
| 57 | 2.3.5 | Testear | milestone, manual | 1d | 2014-06-07 A | 2014-06-07 A | 100% |  |  |  |  |  |
| 58 | 2.4 | **Registrar Campeonato** |  | 22d | 2014-06-07 A | 2014-06-28 A | 100% |  |  | Antonio; Paula | 176h | 176h |
| 59 | 2.4.1 | Analizar y Especificar los requerimientos | milestone, manual | 1d | 2014-06-07 A | 2014-06-07 A | 100% |  |  |  |  |  |
| 60 | 2.4.2 | Diseñar Solución | milestone, manual | 1d | 2014-06-07 A | 2014-06-07 A | 100% |  |  |  |  |  |
| 61 | 2.4.3 | Desarrollar | milestone, manual | 1d | 2014-06-07 A | 2014-06-07 A | 100% |  |  |  |  |  |
| 62 | 2.4.4 | Diseño de UI | milestone, manual | 1d | 2014-06-07 A | 2014-06-07 A | 100% |  |  |  |  |  |
| 63 | 2.4.5 | Testear | milestone, manual | 1d | 2014-06-07 A | 2014-06-07 A | 100% |  |  |  |  |  |
| 64 | 2.5 | **Registrar Usuario** |  | 1d? | 2014-06-07 A | 2014-06-07 | 100% | 2014-06-28 |  | Facu; Florencia | 736h | 736h |
| 65 | 2.5.1 | Analizar y Especificar los requerimientos | milestone, manual | 8d | 2014-06-07 A | 2014-06-14 A | 100% |  |  | Antonio; Florencia | 128h | 128h |
| 66 | 2.5.2 | **Diseñar Solución** |  | 1d | 2014-06-14 A | 2014-06-14 A | 100% |  |  |  |  |  |
| 67 | 2.5.2.1 | Actualizar modelos existentes | milestone, manual | 1d | 2014-06-14 A | 2014-06-14 A | 100% |  |  |  |  |  |
| 68 | 2.5.2.2 | Crear nuevos modelos | milestone, manual | 1d | 2014-06-14 A | 2014-06-14 A | 100% |  |  |  |  |  |
| 69 | 2.5.3 | Desarrollar | milestone, manual | 6d | 2014-06-21 A | 2014-06-26 A | 100% |  |  | Antonio; Facu; Paula | 144h | 144h |
| 70 | 2.5.4 | Diseño de UI | milestone, manual | 11d | 2014-06-14 A | 2014-06-24 A | 100% |  |  | Facu | 88h | 88h |
| 71 | 2.5.5 | Testear | milestone, manual | 3d | 2014-06-26 A | 2014-06-28 A | 100% |  |  | Paula | 24h | 24h |
| 72 | 2.6 | Consultar Ediciones y Torneos | milestone, manual | 22d | 2014-06-07 A | 2014-06-28 A | 100% |  |  | Paula | 176h | 176h |
| 73 | 2.7 | Iniciar Sesión | milestone, manual | 22d | 2014-06-07 A | 2014-06-28 A | 100% |  |  | Facu | 176h | 176h |
| 74 | 2.8 | Cerrar Sesión | milestone, manual | 22d | 2014-06-07 A | 2014-06-28 A | 100% |  |  | Facu | 176h | 176h |
| 75 | 2.9 | Gestionar cambios | milestone, manual | 22d | 2014-06-07 A | 2014-06-28 A | 100% |  |  | Florencia | 176h | 176h |
| 76 | 2.10 | Realizar seguimiento y control de riesgos | milestone, manual | 22d | 2014-06-07 A | 2014-06-28 A | 100% |  |  | Facu | 176h | 176h |
| 77 | 2.11 | Realizar Sprint Review | milestone, manual | 1d | 2014-06-28 A | 2014-06-28 A | 100% |  |  | Antonio; Facu; Florencia; Paula | 32h | 32h |
| 78 | 3 | Realizar reunión retrospectiva | milestone, manual | 0d | 2014-06-28 A | 2014-06-28 A | 100% |  | start no earlier than 2014-06-28 | Antonio; Facu; Florencia; Paula | 32h | 32h |

| ID | WBS | Task | Type | Duration | Start | Finish | Predecessors | Complete | Actual start | Actual finish | Constraint | Resources | Work | Actual work |
| --- | --- | --- | --- | --- | --- | --- | --- | --- | --- | --- | --- | --- | --- | --- |
| 79 | 4 | **Sprint 2** |  | 22d | 2014-06-28 A | 2014-07-19 | 78FS+95.57d | 100% |  | 2014-06-28 |  |  | 144h | 144h |
| 80 | 4.1 | Realizar Sprint Planning | milestone, manual | 1d | 2014-06-28 A | 2014-06-28 A |  | 100% |  |  |  | Antonio; Facu; Florencia; Paula | 32h | 32h |
| 81 | 4.2 | **Registrar Equipo** |  | 1d? | 2014-06-28 A | 2014-06-28 A |  | 100% |  |  |  |  | 64h | 64h |
| 82 | 4.2.1 | Analizar y Especificar los requerimientos | milestone, manual | 1d | 2014-06-28 A | 2014-06-28 A |  | 100% |  |  |  | Florencia; Paula | 8h | 8h |
| 83 | 4.2.2 | **Diseñar Solución** |  | 1d? | 2014-06-28 A | 2014-06-28 A |  | 100% |  |  |  | Florencia | 24h | 24h |
| 84 | 4.2.2.1 | Actualizar modelos existentes | milestone, manual | 1d | 2014-06-28 A | 2014-06-28 A |  | 100% |  |  |  | Florencia | 8h | 8h |
| 85 | 4.2.2.2 | Crear nuevos modelos | milestone, manual | 1d | 2014-06-28 A | 2014-06-28 A |  | 100% |  |  |  | Florencia | 8h | 8h |
| 86 | 4.2.3 | Desarrollar | milestone, manual | 1d | 2014-06-28 A | 2014-06-28 A |  | 100% |  |  |  | Antonio; Facu; Florencia; Paula | 32h | 32h |
| 87 | 4.3 | **Modificar Campeonato** |  | 1d? | 2014-06-28 A | 2014-06-28 A |  | 100% |  |  |  |  |  |  |
| 88 | 4.3.1 | Análisis y desarrollo | milestone, manual | 1d | 2014-06-28 A | 2014-06-28 A |  | 100% |  |  |  |  |  |  |
| 89 | 4.4 | **Corrección de Bugs** |  | 1d? | 2014-06-28 A | 2014-06-28 A |  | 100% |  |  |  |  |  |  |
| 90 | 4.4.1 | Análisis y desarrollo | milestone, manual | 1d | 2014-06-28 A | 2014-06-28 A |  | 100% |  |  |  |  |  |  |
| 91 | 4.5 | **Registrar opciones de Personalización de Edición** |  | 1d? | 2014-06-28 A | 2014-06-28 A |  | 100% |  |  |  |  |  |  |
| 92 | 4.5.1 | Análisis y desarrollo | milestone, manual | 1d | 2014-06-28 A | 2014-06-28 A |  | 100% |  |  |  |  |  |  |
| 93 | 4.6 | Testear | milestone, manual | 1d | 2014-06-28 A | 2014-06-28 A |  | 100% |  |  |  | Paula | 8h | 8h |
| 94 | 4.7 | Realizar seguimiento y control de riesgos | milestone, manual | 1d | 2014-06-28 A | 2014-06-28 A |  | 100% |  |  |  | Florencia | 8h | 8h |
| 95 | 4.8 | Realizar Sprint Review | milestone, manual | 1d | 2014-06-28 A | 2014-06-28 A |  | 100% |  |  |  | Antonio; Facu; Florencia; Paula | 32h | 32h |
| 96 | 5 | Realizar reunión retrospectiva | milestone, manual | 0d | 2014-07-19 A | 2014-07-19 A |  | 100% |  |  | start no earlier than 2014-07-19 | Antonio; Facu; Florencia; Paula | 32h | 32h |
| 97 | 6 | **Sprint 3** |  | 22d | 2014-07-19 | 2014-08-09 A | 96FS+95.57d | 100% | 2014-07-13 |  |  |  | 2072h | 2072h |
| 98 | 6.1 | Realizar Sprint Planning | milestone, manual | 1d | 2014-07-19 A | 2014-07-19 A |  | 100% |  |  |  | Antonio; Facu; Florencia; Paula | 32h | 32h |
| 99 | 6.2 | Analizar y Especificar los requerimientos | milestone, manual | 4d | 2014-07-19 A | 2014-07-22 A |  | 100% |  |  |  | Facu; Florencia | 64h | 64h |
| 100 | 6.3 | **Diseñar Solución** |  | 4d | 2014-07-19 A | 2014-07-22 A |  | 100% |  |  |  | Antonio; Paula | 128h | 128h |
| 101 | 6.3.1 | Actualizar modelos existentes | milestone, manual | 4d | 2014-07-19 A | 2014-07-22 A |  | 100% |  |  |  | Antonio | 32h | 32h |
| 102 | 6.3.2 | Crear nuevos modelos | milestone, manual | 4d | 2014-07-19 A | 2014-07-22 A |  | 100% |  |  |  | Paula | 32h | 32h |
| 103 | 6.4 | Reestructuración de Código | milestone, manual | 22d | 2014-07-19 A | 2014-08-09 A |  | 100% |  |  |  | Antonio; Facu; Florencia; Paula | 704h | 704h |

| ID | WBS | Task | Type | Duration | Start | Finish | Predecessors | Complete | Actual finish | Constraint | Resources | Work | Actual work |
| --- | --- | --- | --- | --- | --- | --- | --- | --- | --- | --- | --- | --- | --- |
| 104 | 6.5 | **Modificar Equipo** |  | 8d | 2014-07-19 A | 2014-07-26 A |  | 100% |  |  | Paula | 64h | 64h |
| 105 | 6.5.1 | Análisis y desarrollo | milestone, manual | 1d | 2014-07-19 A | 2014-07-19 A |  | 100% |  |  |  |  |  |
| 106 | 6.6 | **Consultar Equipo** |  | 15d | 2014-07-19 A | 2014-08-02 A |  | 100% |  |  | Paula | 120h | 120h |
| 107 | 6.6.1 | Análisis y desarrollo | milestone, manual | 1d | 2014-07-19 A | 2014-07-19 A |  | 100% |  |  |  |  |  |
| 108 | 6.7 | **Corrección de Bugs** |  | 28d | 2014-07-13 A | 2014-08-09 A |  | 100% |  |  | Antonio; Facu; Florencia; Paula | 896h | 896h |
| 109 | 6.7.1 | Análisis y desarrollo | milestone, manual | 1d | 2014-07-13 A | 2014-07-13 A |  | 100% |  |  |  |  |  |
| 110 | 6.8 | Preparacion de presentación de grado de Avances | milestone, manual | 1d | 2014-08-09 A | 2014-08-09 A |  | 100% |  |  | Antonio; Facu; Florencia; Paula | 32h | 32h |
| 111 | 6.9 | Realizar Sprint Review | milestone, manual | 1d | 2014-07-19 A | 2014-07-19 A |  | 100% |  |  | Antonio; Facu; Florencia; Paula | 32h | 32h |
| 112 | 7 | Realizar reunión retrospectiva | milestone, manual | 0d | 2014-08-09 A | 2014-08-09 A |  | 100% |  | start no earlier than 2014-08-09 | Antonio; Facu; Florencia; Paula | 32h | 32h |
| 113 | 8 | **Sprint 4** |  | 21d | 2014-08-09 A | 2014-08-30 A | 112FS+95.57d | 100% |  |  |  | 3728h | 3728h |
| 114 | 8.1 | Realizar Sprint Planning | milestone, manual | 1d | 2014-08-09 A | 2014-08-10 A |  | 100% |  |  | Antonio; Facu; Florencia; Paula | 32h | 32h |
| 115 | 8.2 | Investigar Algoritmos de Generación de fixture | milestone, manual | 1d | 2014-08-09 A | 2014-08-10 A |  | 100% |  |  | Antonio; Florencia | 16h | 16h |
| 116 | 8.3 | **Administrar Canchas** |  | 21d | 2014-08-09 A | 2014-08-30 A |  | 100% |  |  | Paula | 168h | 168h |
| 117 | 8.3.1 | **Registrar Cancha** |  | 21d | 2014-08-09 A | 2014-08-30 |  | 100% | 2014-08-10 |  |  |  |  |
| 118 | 8.3.1.1 | Desarrollo | milestone, manual | 1d | 2014-08-09 A | 2014-08-10 A |  | 100% |  |  |  |  |  |
| 119 | 8.3.1.2 | Testing | milestone, manual | 1d | 2014-08-09 A | 2014-08-10 A |  | 100% |  |  |  |  |  |
| 120 | 8.3.2 | **Modificar Cancha** |  | 21d | 2014-08-09 A | 2014-08-30 |  | 100% | 2014-08-10 |  |  |  |  |
| 121 | 8.3.2.1 | Desarrollo | milestone, manual | 1d | 2014-08-09 A | 2014-08-10 A |  | 100% |  |  |  |  |  |
| 122 | 8.3.2.2 | Testing | milestone, manual | 1d | 2014-08-09 A | 2014-08-10 A |  | 100% |  |  |  |  |  |
| 123 | 8.3.3 | **Eliminar Cancha** |  | 21d | 2014-08-09 A | 2014-08-30 |  | 100% | 2014-08-10 |  |  |  |  |
| 124 | 8.3.3.1 | Desarrollo | milestone, manual | 1d | 2014-08-09 A | 2014-08-10 A |  | 100% |  |  |  |  |  |
| 125 | 8.3.3.2 | Testing | milestone, manual | 1d | 2014-08-09 A | 2014-08-10 A |  | 100% |  |  |  |  |  |
| 126 | 8.3.4 | **Consultar Cancha** |  | 21d | 2014-08-09 A | 2014-08-30 |  | 100% | 2014-08-10 |  |  |  |  |
| 127 | 8.3.4.1 | Desarrollo | milestone, manual | 1d | 2014-08-09 A | 2014-08-10 A |  | 100% |  |  |  |  |  |
| 128 | 8.3.4.2 | Testing | milestone, manual | 1d | 2014-08-09 A | 2014-08-10 A |  | 100% |  |  |  |  |  |

| ID | WBS | Task | Type | Duration | Start | Finish | Complete | Actual finish | Resources | Work | Actual work |
| --- | --- | --- | --- | --- | --- | --- | --- | --- | --- | --- | --- |
| 129 | 8.4 | **Administrar Jugadores** |  | 21d | 2014-08-09 A | 2014-08-29 A | 100% |  | Paula; Facu | 336h | 336h |
| 130 | 8.4.1 | **Registrar Jugador** |  | 21d | 2014-08-09 A | 2014-08-29 | 100% | 2014-08-10 |  |  |  |
| 131 | 8.4.1.1 | Desarrollo | milestone, manual | 2d | 2014-08-09 A | 2014-08-10 A | 100% |  |  |  |  |
| 132 | 8.4.1.2 | Testing | milestone, manual | 2d | 2014-08-09 A | 2014-08-10 A | 100% |  |  |  |  |
| 133 | 8.4.2 | **Modificar Jugador** |  | 21d | 2014-08-09 A | 2014-08-29 | 100% | 2014-08-10 |  |  |  |
| 134 | 8.4.2.1 | Desarrollo | milestone, manual | 2d | 2014-08-09 A | 2014-08-10 A | 100% |  |  |  |  |
| 135 | 8.4.2.2 | Testing | milestone, manual | 1d | 2014-08-09 A | 2014-08-09 A | 100% |  |  |  |  |
| 136 | 8.4.3 | **Eliminar Jugador** |  | 21d | 2014-08-09 A | 2014-08-29 | 100% | 2014-08-09 |  |  |  |
| 137 | 8.4.3.1 | Desarrollo | milestone, manual | 1d | 2014-08-09 A | 2014-08-09 A | 100% |  |  |  |  |
| 138 | 8.4.3.2 | Testing | milestone, manual | 1d | 2014-08-09 A | 2014-08-09 A | 100% |  |  |  |  |
| 139 | 8.4.4 | Consultar Jugador | milestone, manual | 21d | 2014-08-09 A | 2014-08-29 A | 100% |  |  |  |  |
| 140 | 8.5 | **Administrar Equipos** |  | 21d | 2014-08-09 A | 2014-08-30 A | 100% |  | Paula; Facu | 168h | 168h |
| 141 | 8.5.1 | **Eliminar Equipo** |  | 21d | 2014-08-09 A | 2014-08-30 | 100% | 2014-08-10 |  |  |  |
| 142 | 8.5.1.1 | Desarrollo | milestone, manual | 1d | 2014-08-09 A | 2014-08-10 A | 100% |  |  |  |  |
| 143 | 8.5.1.2 | Testing | milestone, manual | 1d | 2014-08-09 A | 2014-08-10 A | 100% |  |  |  |  |
| 144 | 8.6 | **Administrar Árbitros** |  | 21d | 2014-08-09 A | 2014-08-29 A | 100% |  | Paula | 168h | 168h |
| 145 | 8.6.1 | **Registrar Árbitro** |  | 21d | 2014-08-09 A | 2014-08-29 | 100% | 2014-08-10 |  |  |  |
| 146 | 8.6.1.1 | Desarrollo | milestone, manual | 1d | 2014-08-10 A | 2014-08-10 A | 100% |  |  |  |  |
| 147 | 8.6.1.2 | Testing | milestone, manual | 1d | 2014-08-09 A | 2014-08-09 A | 100% |  |  |  |  |
| 148 | 8.6.2 | **Modificar Árbitro** |  | 0d? | 2014-08-09 A | 2014-08-09 A | 100% |  |  |  |  |
| 149 | 8.6.2.1 | Desarrollo | milestone, manual | 1d | 2014-08-09 A | 2014-08-09 A | 100% |  |  |  |  |
| 150 | 8.6.2.2 | Testing | milestone, manual | 1d | 2014-08-09 A | 2014-08-09 A | 100% |  |  |  |  |
| 151 | 8.6.3 | **Eliminar Árbitro** |  | 0d? | 2014-08-09 A | 2014-08-09 A | 100% |  |  |  |  |
| 152 | 8.6.3.1 | Desarrollo | milestone, manual | 1d | 2014-08-09 A | 2014-08-09 A | 100% |  |  |  |  |
| 153 | 8.6.3.2 | Testing | milestone, manual | 1d | 2014-08-09 A | 2014-08-09 A | 100% |  |  |  |  |

| ID | WBS | Task | Type | Duration | Start | Finish | Complete | Actual finish | Resources | Work | Actual work |
| --- | --- | --- | --- | --- | --- | --- | --- | --- | --- | --- | --- |
| 154 | 8.6.4 | **Consultar Árbitro** |  | 0d? | 2014-08-09 A | 2014-08-09 A | 100% |  |  |  |  |
| 155 | 8.6.4.1 | Desarrollo | milestone, manual | 1d | 2014-08-09 A | 2014-08-09 A | 100% |  |  |  |  |
| 156 | 8.6.4.2 | Testing | milestone, manual | 1d | 2014-08-09 A | 2014-08-09 A | 100% |  |  |  |  |
| 157 | 8.7 | **Modificar Usuario** |  | 21d | 2014-08-09 A | 2014-08-30 A | 100% |  | Florencia | 168h | 168h |
| 158 | 8.7.1 | Desarrollo | milestone, manual | 1d | 2014-08-09 A | 2014-08-10 A | 100% |  |  |  |  |
| 159 | 8.7.2 | Testing | milestone, manual | 1d | 2014-08-09 A | 2014-08-10 A | 100% |  |  |  |  |
| 160 | 8.8 | **Administrar Edición** |  | 21d | 2014-08-09 A | 2014-08-30 A | 100% |  | Antonio; Facu; Florencia; Paula | 2064h | 2064h |
| 161 | 8.8.1 | **Eliminar Edición No Comenzada** |  | 21d | 2014-08-10 A | 2014-08-30 A | 100% |  | Antonio; Facu; Florencia; Paula | 680h | 680h |
| 162 | 8.8.1.1 | Desarrollo | milestone, manual | 1d | 2014-08-10 A | 2014-08-10 A | 100% |  | Paula | 8h | 8h |
| 163 | 8.8.1.2 | Testing | milestone, manual | 1d | 2014-08-10 A | 2014-08-10 A | 100% |  |  |  |  |
| 164 | 8.8.2 | **Modificar Edición No Comenzada** |  | 21d | 2014-08-09 A | 2014-08-30 A | 100% |  | Paula | 176h | 176h |
| 165 | 8.8.2.1 | Desarrollo | milestone, manual | 1d | 2014-08-09 A | 2014-08-10 A | 100% |  | Paula | 8h | 8h |
| 166 | 8.8.2.2 | Testing | milestone, manual | 1d | 2014-08-09 A | 2014-08-10 A | 100% |  |  |  |  |
| 167 | 8.8.3 | **Registrar Configuraciones** |  | 21d | 2014-08-09 A | 2014-08-30 A | 100% |  | Antonio; Florencia | 352h | 352h |
| 168 | 8.8.3.1 | Desarrollo | milestone, manual | 1d | 2014-08-09 A | 2014-08-10 A | 100% |  | Antonio; Florencia | 16h | 16h |
| 169 | 8.8.3.2 | Testing | milestone, manual | 1d | 2014-08-09 A | 2014-08-10 A | 100% |  |  |  |  |
| 170 | 8.8.4 | **Asignar equipos a la edición** |  | 21d | 2014-08-09 A | 2014-08-30 A | 100% |  | Facu; Paula | 184h | 184h |
| 171 | 8.8.4.1 | Diseño de Interfaz | milestone, manual | 1d | 2014-08-09 A | 2014-08-10 A | 100% |  | Facu | 8h | 8h |
| 172 | 8.8.4.2 | Desarrollar | milestone, manual | 1d | 2014-08-09 A | 2014-08-10 A | 100% |  | Paula | 8h | 8h |
| 173 | 8.8.4.3 | Testear | milestone, manual | 1d | 2014-08-09 A | 2014-08-10 A | 100% |  |  |  |  |
| 174 | 8.9 | **Generación de Fixture Todos contra todos** |  | 21d | 2014-08-09 A | 2014-08-30 A | 100% |  | Antonio; Facu; Florencia | 576h | 576h |
| 175 | 8.9.1 | **Registrar Fase** |  | 21d | 2014-08-09 A | 2014-08-30 | 100% | 2014-08-10 |  | 40h | 40h |
| 176 | 8.9.1.1 | Diseño de solución | milestone, manual | 1d | 2014-08-09 A | 2014-08-10 A | 100% |  | Antonio; Florencia | 16h | 16h |
| 177 | 8.9.1.2 | Diseño de Interfaz | milestone, manual | 1d | 2014-08-09 A | 2014-08-10 A | 100% |  | Antonio; Facu | 16h | 16h |
| 178 | 8.9.1.3 | Desarrollo | milestone, manual | 1d | 2014-08-09 A | 2014-08-10 A | 100% |  | Florencia | 8h | 8h |
| 179 | 8.9.1.4 | Testing | milestone, manual | 1d | 2014-08-09 A | 2014-08-10 A | 100% |  |  |  |  |

| ID | WBS | Task | Type | Duration | Start | Finish | Predecessors | Complete | Actual start | Actual finish | Constraint | Resources | Work | Actual work |
| --- | --- | --- | --- | --- | --- | --- | --- | --- | --- | --- | --- | --- | --- | --- |
| 180 | 8.9.2 | **Mostrar Fixture** |  | 21d | 2014-08-10 A | 2014-08-30 |  | 100% |  | 2014-08-10 |  |  | 32h | 32h |
| 181 | 8.9.2.1 | Diseño de Interfaz | milestone, manual | 1d | 2014-08-10 A | 2014-08-10 A |  | 100% |  |  |  | Antonio; Facu | 16h | 16h |
| 182 | 8.9.2.2 | Desarrollo | milestone, manual | 1d | 2014-08-10 A | 2014-08-10 A |  | 100% |  |  |  | Florencia; Paula | 16h | 16h |
| 183 | 8.9.2.3 | Testing | milestone, manual | 1d | 2014-05-03 | 2014-05-03 |  | 100% | 2014-08-10 | 2014-08-10 |  |  |  |  |
| 184 | 8.10 | Realizar Sprint Review | milestone, manual | 1d | 2014-10-25 | 2014-10-25 |  | 100% | 2014-08-30 | 2014-08-30 | finish no earlier than 2014-08-30 | Antonio; Facu; Florencia; Paula | 32h | 32h |
| 185 | 9 | Realizar reunión retrospectiva | milestone, manual | 0d | 2014-08-30 A | 2014-08-30 A |  | 100% |  |  | start no earlier than 2014-08-30 | Antonio; Facu; Florencia; Paula | 32h | 32h |
| 186 | 10 | **Sprint 5** |  | 22d | 2014-08-30 A | 2014-09-20 A | 185FS+95.57d | 100% |  |  |  |  | 1040h | 1040h |
| 187 | 10.1 | Realizar Sprint Planning | milestone, manual | 1d | 2014-08-30 A | 2014-08-30 A |  | 100% |  |  |  | Antonio; Facu; Florencia; Paula | 32h | 32h |
| 188 | 10.2 | Administrar Jugadores | milestone, manual | 5d | 2014-09-02 A | 2014-09-06 A |  | 100% |  |  |  | Facu; Paula | 80h | 80h |
| 189 | 10.3 | **Administrar Noticias** |  | 12d | 2014-09-02 A | 2014-09-13 A |  | 100% |  |  |  | Paula | 480h | 480h |
| 190 | 10.3.1 | Registrar Noticias | milestone, manual | 12d | 2014-09-02 A | 2014-09-13 A |  | 100% |  |  |  | Paula | 96h | 96h |
| 191 | 10.3.2 | Modificar Noticias | milestone, manual | 12d | 2014-09-02 A | 2014-09-13 A |  | 100% |  |  |  | Paula | 96h | 96h |
| 192 | 10.3.3 | Eliminar Noticias | milestone, manual | 12d | 2014-09-02 A | 2014-09-13 A |  | 100% |  |  |  | Paula | 96h | 96h |
| 193 | 10.3.4 | Consultar Noticias | milestone, manual | 12d | 2014-09-02 A | 2014-09-13 A |  | 100% |  |  |  | Paula | 96h | 96h |
| 194 | 10.4 | **Administrar Partidos** |  | 8d | 2014-09-13 A | 2014-09-20 A |  | 100% |  |  |  | Florencia; Facu | 192h | 192h |
| 195 | 10.4.1 | Diseño de IU | milestone, manual | 8d | 2014-09-13 A | 2014-09-20 A |  | 100% |  |  |  | Facu | 64h | 64h |
| 196 | 10.5 | Modificación de datos de un usuario | milestone, manual | 4d | 2014-08-30 A | 2014-09-02 A |  | 100% |  |  |  | Florencia | 32h | 32h |
| 197 | 10.6 | Corrección de Bugs | milestone, manual | 12d | 2014-09-09 A | 2014-09-20 A |  | 100% |  |  |  | Antonio; Facu | 192h | 192h |
| 198 | 10.7 | Realizar Sprint Review | milestone, manual | 1d | 2014-09-20 A | 2014-09-20 A |  | 100% |  |  |  | Antonio; Facu; Florencia; Paula | 32h | 32h |
| 199 | 11 | Realizar reunión retrospectiva | milestone, manual | 1d? | 2014-11-29 | 2014-11-29 |  | 100% | 2014-09-20 | 2014-09-20 |  | Antonio; Facu; Florencia; Paula | 32h | 32h |
| 200 | 12 | **Sprint 6** |  | 22d | 2014-09-20 A | 2014-10-11 A |  | 100% |  |  |  |  | 1584h | 1584h |
| 201 | 12.1 | Realizar Sprint Planning | milestone, manual | 1d | 2014-09-20 A | 2014-09-20 A |  | 100% |  |  |  | Antonio; Facu; Florencia; Paula | 32h | 32h |
| 202 | 12.2 | Generar fixture todos contra todos una fase - muchos grupos | milestone, manual | 8d | 2014-09-20 A | 2014-09-27 A |  | 100% |  |  |  | Antonio; Florencia | 128h | 128h |
| 203 | 12.3 | Modificar Configuracion de edición | milestone, manual | 8d | 2014-09-20 A | 2014-09-27 A |  | 100% |  |  |  | Florencia | 64h | 64h |
| 204 | 12.4 | Modificar orden de las fechas de fixture una fase - 1 grupo, todos contra todos | milestone, manual | 8d | 2014-09-20 A | 2014-09-27 A |  | 100% |  |  |  | Facu; Paula | 128h | 128h |
| 205 | 12.5 | Diseño de la solución para registrar partidos | milestone, manual | 8d | 2014-09-23 A | 2014-09-30 A |  | 100% |  |  |  | Antonio; Facu; Florencia; Paula | 256h | 256h |
| 206 | 12.6 | Actualizar BD | milestone, manual | 8d | 2014-09-20 A | 2014-09-27 A |  | 100% |  |  |  | Paula | 64h | 64h |
| 207 | 12.7 | Generar fixture Una fase por eliminatoria | milestone, manual | 12d | 2014-09-30 A | 2014-10-11 A |  | 100% |  |  |  | Antonio; Florencia | 192h | 192h |
| 208 | 12.8 | Testear todas las funcionalidades | milestone, manual | 15d | 2014-09-20 A | 2014-10-04 A |  | 100% |  |  |  | Florencia; Paula | 240h | 240h |
| 209 | 12.9 | Corrección de Bugs | milestone, manual | 15d | 2014-09-20 A | 2014-10-04 A |  | 100% |  |  |  | Antonio; Facu; Florencia; Paula | 480h | 480h |
| 210 | 13 | Realizar reunión retrospectiva | milestone, manual | 1d | 2014-10-11 A | 2014-10-11 A |  | 100% |  |  | start no earlier than 2015-01-03 | Antonio; Facu; Florencia; Paula | 32h | 32h |

| ID | WBS | Task | Type | Duration | Start | Finish | Predecessors | Complete | Actual finish | Constraint | Resources | Work | Actual work |
| --- | --- | --- | --- | --- | --- | --- | --- | --- | --- | --- | --- | --- | --- |
| 211 | 14 | **Sprint 7** |  | 22d | 2014-10-11 A | 2014-11-01 A | 210FS+95.57d | 100% |  |  | Antonio; Facu; Florencia; Paula | 1536h | 1536h |
| 212 | 14.1 | Realizar Sprint Planning - Release | milestone, manual | 1d | 2014-10-11 A | 2014-10-11 A |  | 100% |  |  | Antonio; Facu; Florencia; Paula | 32h | 32h |
| 213 | 14.2 | Generar fixture mas de una fase | milestone, manual | 1d | 2014-10-18 A | 2014-10-18 A |  | 100% |  |  | Antonio | 8h | 8h |
| 214 | 14.3 | Registrar para un partido fecha, hora y arbitro a asignar | milestone, manual | 15d | 2014-10-11 A | 2014-10-25 A |  | 100% |  |  | Facu | 120h | 120h |
| 215 | 14.4 | Registrar post partido, sanciones, goles, cambios, jugadores que jugaron | milestone, manual | 15d | 2014-10-11 A | 2014-10-25 A |  | 100% |  |  | Facu | 120h | 120h |
| 216 | 14.5 | Mostrar Estadisticas de Fecha | milestone, manual | 1d | 2014-10-21 A | 2014-10-21 A |  | 100% |  |  | Facu; Florencia | 16h | 16h |
| 217 | 14.6 | Testing de Funcionalidad | milestone, manual | 1d | 2014-10-22 A | 2014-10-22 A |  | 100% |  |  | Paula | 8h | 8h |
| 218 | 14.7 | Corrección de Bugs | milestone, manual | 6d | 2014-10-22 A | 2014-10-27 A |  | 100% |  |  | Antonio; Facu; Florencia; Paula | 192h | 192h |
| 219 | 14.8 | Armar Manual de usuario | milestone, manual | 4d | 2014-10-11 A | 2014-10-14 A |  | 100% |  |  | Paula | 32h | 32h |
| 220 | 14.9 | Generar informe de Impacto Ambiental | milestone, manual | 5d | 2014-10-14 A | 2014-10-18 A |  | 100% |  |  | Paula | 40h | 40h |
| 221 | 14.10 | Revisar Documentos de Requerimientos | milestone, manual | 2d | 2014-10-21 A | 2014-10-22 A |  | 100% |  |  | Paula | 16h | 16h |
| 222 | 14.11 | Revisar Modelado | milestone, manual | 2d | 2014-10-21 A | 2014-10-22 A |  | 100% |  |  | Florencia | 16h | 16h |
| 223 | 14.12 | Revisar Plan de Testing | milestone, manual | 1d | 2014-10-18 A | 2014-10-18 A |  | 100% |  |  | Paula | 8h | 8h |
| 224 | 14.13 | Revisar Reglas de Programación | milestone, manual | 3d | 2014-10-21 A | 2014-10-23 A |  | 100% |  |  | Florencia; Paula | 48h | 48h |
| 225 | 14.14 | Revisar Plan de Configuración | milestone, manual | 3d | 2014-10-21 A | 2014-10-23 A |  | 100% |  |  | Florencia | 24h | 24h |
| 226 | 14.15 | Ver casos de Prueba ejecutados | milestone, manual | 1d | 2014-10-24 A | 2014-10-24 A |  | 100% |  |  | Florencia; Paula | 16h | 16h |
| 227 | 14.16 | Revisar Plan de Riesgos | milestone, manual | 1d | 2014-10-16 A | 2014-10-17 A |  | 100% |  |  | Florencia | 8h | 8h |
| 228 | 14.17 | Revisar informes de seguimiento | milestone, manual | 3d | 2014-10-23 A | 2014-10-25 A |  | 100% |  |  | Florencia; Paula | 48h | 48h |
| 229 | 14.18 | Revisar Documentos de Capacitación e Investigación | milestone, manual | 1d | 2014-10-11 A | 2014-10-11 A |  | 100% |  |  | Florencia; Paula | 16h | 16h |
| 230 | 14.19 | Preparar Presentación de Regularidad | milestone, manual | 1d | 2014-10-25 A | 2014-10-25 A |  | 100% |  |  | Antonio; Facu; Florencia; Paula | 32h | 32h |
| 231 | 14.20 | Realizar Sprint Review | milestone, manual | 1d | 2014-10-28 A | 2014-10-28 A |  | 100% |  |  | Antonio; Facu; Florencia; Paula | 32h | 32h |
| 232 | 15 | Realizar reunión retrospectiva | milestone, manual | 0d | 2014-11-01 A | 2014-11-01 A |  | 100% |  | start no earlier than 2014-11-01 | Antonio; Facu; Florencia; Paula | 32h | 32h |
| 233 | 16 | **Sprint 8** |  | 22d | 2014-11-01 A | 2014-11-22 | 232FS+95.57d | 100% | 2014-11-01 |  |  | 104h | 104h |
| 234 | 16.1 | **Corrección de Bugs y refactoring** |  | 1d? | 2014-11-01 A | 2014-11-01 A |  | 100% |  |  |  | 96h | 96h |
| 235 | 16.1.1 | Mejorar pantalla ediciones | milestone, manual | 1d | 2014-11-01 A | 2014-11-01 A |  | 100% |  |  | Facu; Florencia | 16h | 16h |
| 236 | 16.1.2 | Deshabilitar campos en la administración de fechas | milestone, manual | 1d | 2014-11-01 A | 2014-11-01 A |  | 100% |  |  | Facu | 8h | 8h |
| 237 | 16.1.3 | Restructuración Gestor de Fixture | milestone, manual | 1d | 2014-11-01 A | 2014-11-01 A |  | 100% |  |  | Antonio | 8h | 8h |
| 238 | 16.1.4 | Refactorización de DAOS | milestone, manual | 1d | 2014-11-01 A | 2014-11-01 A |  | 100% |  |  | Paula | 8h | 8h |
| 239 | 16.1.5 | Corregir ordenamiento tabla de posiciones | milestone, manual | 1d | 2014-11-01 A | 2014-11-01 A |  | 100% |  |  | Florencia | 8h | 8h |
| 240 | 16.1.6 | Actualizar BD con Equipos X Grupo | milestone, manual | 1d | 2014-11-01 A | 2014-11-01 A |  | 100% |  |  | Florencia | 8h | 8h |
| 241 | 16.1.7 | Correcciones al generar fixture más de una fase | milestone, manual | 1d | 2014-11-01 A | 2014-11-01 A |  | 100% |  |  | Antonio | 8h | 8h |
| 242 | 16.1.8 | Generar e implementar un Gestor de Controles | milestone, manual | 1d | 2014-11-01 A | 2014-11-01 A |  | 100% |  |  | Facu | 8h | 8h |
| 243 | 16.1.9 | Correcciones varias en estilos | milestone, manual | 1d | 2014-11-01 A | 2014-11-01 A |  | 100% |  |  | Facu | 8h | 8h |
| 244 | 16.1.10 | Optimizar metodos de acceso a datos para manejar fixture de mas de una fase | milestone, manual | 1d | 2014-11-01 A | 2014-11-01 A |  | 100% |  |  | Florencia | 8h | 8h |
| 245 | 16.1.11 | Optimizar metodos para cerrar fase(solo a nivel de acceso a datos) | milestone, manual | 1d | 2014-11-01 A | 2014-11-01 A |  | 100% |  |  | Florencia | 8h | 8h |
| 246 | 16.2 | Diseñar UI Administrar Sanciones | milestone, manual | 1d | 2014-11-01 A | 2014-11-01 A |  | 100% |  |  | Paula | 8h | 8h |
| 247 | 17 | Realizar reunión retrospectiva | milestone, manual | 0d | 2014-11-22 A | 2014-11-22 A | 233FS+95.57d | 100% |  | start no earlier than 2015-03-11 | Antonio; Facu; Florencia | 24h | 24h |

| ID | WBS | Task | Type | Duration | Start | Finish | Predecessors | Complete | Remaining | Actual start | Actual finish | Resources | Work | Actual work |
| --- | --- | --- | --- | --- | --- | --- | --- | --- | --- | --- | --- | --- | --- | --- |
| 248 | 18 | **Sprint 9** |  | 26d | 2014-11-22 A | 2014-12-17 | 247FS+95.57d | 92% | 2d |  |  |  | 872h | 824h |
| 249 | 18.1 | **Corrección de Bugs** |  | 1d | 2014-11-22 | 2014-11-22 |  | 100% |  | 2014-11-25 | 2014-11-29 | Antonio; Facu; Florencia; Paula | 248h | 248h |
| 250 | 18.1.1 | Eliminar Edición | milestone, manual | 4d | 2014-11-25 A | 2014-11-28 A |  | 100% |  |  |  | Paula | 32h | 32h |
| 251 | 18.1.2 | Crear vistas en BD | milestone, manual | 1d | 2014-11-27 A | 2014-11-27 A |  | 100% |  |  |  | Paula | 8h | 8h |
| 252 | 18.1.3 | Actualización de DAOS | milestone, manual | 5d | 2014-11-25 A | 2014-11-29 A |  | 100% |  |  |  | Paula | 40h | 40h |
| 253 | 18.1.4 | Revisión y corrección de Try y catch en todos los metodos de pantalla | milestone, manual | 1d | 2014-11-26 A | 2014-11-26 A |  | 100% |  |  |  | Florencia | 8h | 8h |
| 254 | 18.2 | Implementar nuevo filtro para buscadores | milestone, manual | 1d | 2014-11-22 A | 2014-11-22 A |  | 100% |  |  |  | Facu | 8h | 8h |
| 255 | 18.3 | Correcciónes en generación d e fases | milestone, manual | 11d | 2014-12-01 A | 2014-12-11 A |  | 100% |  |  |  | Antonio; Florencia | 176h | 176h |
| 256 | 18.4 | Actualización en pantalla ediciones | milestone, manual | 9d | 2014-12-01 A | 2014-12-09 A |  | 100% |  |  |  | Facu | 72h | 72h |
| 257 | 18.5 | Administrar Sanciones a equipo y/o jugador | milestone, manual | 23d | 2014-11-25 A | 2014-12-17 |  | 74% | 6d |  |  | Paula | 184h | 136h |
| 258 | 18.6 | Generar e implementar gestor de errores | milestone, manual | 7d | 2014-12-09 A | 2014-12-15 A |  | 100% |  |  |  | Facu; Paula | 56h | 56h |
| 259 | 18.7 | Elegir equipos que pasan a la siguiente fase | milestone, manual | 16d | 2014-11-26 A | 2014-12-11 A |  | 100% |  |  |  | Florencia | 128h | 128h |
| 260 | 19 | Realizar reunión retrospectiva | milestone, manual | 1d | 2014-11-22 | 2014-11-22 |  | 100% |  | 2014-12-13 | 2014-12-13 | Antonio; Facu; Florencia; Paula | 32h | 32h |
| 261 | 20 | **Sprint 10** |  | 26d | 2015-01-26 A | 2015-02-20 A | 260FS+95.57d | 100% |  |  |  |  | 720h | 720h |
| 262 | 20.1 | **Corrección de Bugs** |  | 5d | 2015-01-26 A | 2015-01-30 A |  | 100% |  |  |  |  | 240h | 240h |
| 263 | 20.1.1 | errores con el gestorErrores | milestone, manual | 5d | 2015-01-26 A | 2015-01-30 A |  | 100% |  |  |  | Facu | 40h | 40h |
| 264 | 20.1.2 | Correccion de cambios de estados | milestone, manual | 5d | 2015-01-26 A | 2015-01-30 A |  | 100% |  |  |  | Florencia | 40h | 40h |
| 265 | 20.1.3 | Cambios en GestorFase y Edicion | milestone, manual | 5d | 2015-01-26 A | 2015-01-30 A |  | 100% |  |  |  | Antonio | 40h | 40h |
| 266 | 20.1.4 | Correciones en configuración siguiente fase | milestone, manual | 5d | 2015-01-26 A | 2015-01-30 A |  | 100% |  |  |  | Antonio | 40h | 40h |
| 267 | 20.1.5 | bugs en Lista de partidos | milestone, manual | 5d | 2015-01-26 A | 2015-01-30 A |  | 100% |  |  |  | Antonio | 40h | 40h |
| 268 | 20.1.6 | bug al configurar nueva edicion | milestone, manual | 5d | 2015-01-26 A | 2015-01-30 A |  | 100% |  |  |  | Antonio | 40h | 40h |
| 269 | 20.2 | Modificación de sanciones | milestone, manual | 5d | 2015-01-26 A | 2015-01-30 A |  | 100% |  |  |  | Paula | 40h | 40h |
| 270 | 20.3 | Eliminar Sanciones | milestone, manual | 5d | 2015-01-26 A | 2015-01-30 A |  | 100% |  |  |  | Paula | 40h | 40h |
| 271 | 20.4 | Reunión de planificación | milestone, manual | 1d | 2015-02-03 A | 2015-02-03 A |  | 100% |  |  |  | Antonio; Facu; Florencia; Paula | 32h | 32h |

| ID | WBS | Task | Type | Duration | Start | Finish | Predecessors | Complete | Actual start | Actual finish | Constraint | Resources | Work | Actual work |
| --- | --- | --- | --- | --- | --- | --- | --- | --- | --- | --- | --- | --- | --- | --- |
| 272 | 20.5 | **Corrección en Index** |  | 9d | 2015-02-10 A | 2015-02-18 A |  | 100% |  |  |  |  | 32h | 32h |
| 273 | 20.5.1 | Defectos en Index | milestone, manual | 3d | 2015-02-10 A | 2015-02-12 A |  | 100% |  |  |  | Florencia | 24h | 24h |
| 274 | 20.5.2 | Testing | milestone, manual | 1d | 2015-02-18 A | 2015-02-18 A |  | 100% |  |  |  | Paula | 8h | 8h |
| 275 | 20.6 | Testing y corrección de bugs pequeños | milestone, manual | 17d | 2015-02-04 A | 2015-02-20 A |  | 100% |  |  |  | Paula | 136h | 136h |
| 276 | 20.7 | **Administración de torneo eliminatorio** |  | 1d? | 2015-01-26 | 2015-01-26 |  | 100% | 2015-02-04 | 2015-02-20 |  |  | 96h | 96h |
| 277 | 20.7.1 | Guardar llaves eliminatorio | milestone, manual | 9d | 2015-02-04 A | 2015-02-12 A |  | 100% |  |  |  | Antonio | 72h | 72h |
| 278 | 20.7.2 | Completar llaves a medida que se juegan los partidos | milestone, manual | 3d | 2015-02-18 A | 2015-02-20 A |  | 100% |  |  |  | Antonio | 24h | 24h |
| 279 | 20.8 | **Finalizar Edicion** |  | 17d | 2015-02-04 A | 2015-02-20 A |  | 100% |  |  |  |  | 88h | 88h |
| 280 | 20.8.1 | Armar pantalla | milestone, manual | 3d | 2015-02-04 A | 2015-02-06 A |  | 100% |  |  |  | Florencia | 24h | 24h |
| 281 | 20.8.2 | Modificar tabla de posiciones | milestone, manual | 2d | 2015-02-10 A | 2015-02-11 A |  | 100% |  |  |  | Florencia | 16h | 16h |
| 282 | 20.8.3 | Crear metodos de base de datos | milestone, manual | 3d | 2015-02-11 A | 2015-02-13 A |  | 100% |  |  |  | Florencia | 24h | 24h |
| 283 | 20.8.4 | Crear metodos javascript para tomar tabla | milestone, manual | 3d | 2015-02-18 A | 2015-02-20 A |  | 100% |  |  |  | Antonio | 24h | 24h |
| 284 | 20.9 | Realizar casos de prueba | milestone, manual | 1d | 2015-02-19 A | 2015-02-19 A |  | 100% |  |  |  | Paula | 8h | 8h |
| 285 | 20.10 | Ejecutar casos de prueba | milestone, manual | 1d | 2015-02-20 A | 2015-02-20 A |  | 100% |  |  |  | Paula | 8h | 8h |
| 286 | 21 | Realizar reunión retrospectiva | milestone, manual | 1d | 2014-05-03 | 2014-05-03 |  | 100% | 2015-02-20 | 2015-02-20 | start no earlier than 2015-02-20 | Antonio; Facu; Florencia; Paula | 32h | 32h |
| 287 | 22 | **Sprint 11** |  | 21d | 2015-02-20 A | 2015-03-12 A | 286FS+95.57d | 100% |  |  |  |  | 496h | 496h |
| 288 | 22.1 | Realizar Sprint Planning | milestone, manual | 1d | 2015-02-20 A | 2015-02-20 A |  | 100% |  |  |  | Antonio; Facu; Florencia; Paula | 32h | 32h |
| 289 | 22.2 | **Tareas de Soporte** |  | 1d? | 2015-02-20 A | 2015-02-20 |  | 100% |  | 2015-03-09 |  |  | 200h | 200h |
| 290 | 22.2.1 | Actualizar nuevas pantallas | milestone, manual | 1d | 2015-02-20 A | 2015-02-20 A |  | 100% |  |  |  | Facu | 8h | 8h |
| 291 | 22.2.2 | Cancelar edición | milestone, manual | 1d | 2015-02-25 A | 2015-02-25 A |  | 100% |  |  |  | Paula | 8h | 8h |
| 292 | 22.2.3 | Correccion Bug Finalizar Edición | milestone, manual | 3d | 2015-02-23 A | 2015-02-25 A |  | 100% |  |  |  | Paula; Florencia | 48h | 48h |
| 293 | 22.2.4 | Agregar más colores a la paleta de colores | milestone, manual | 1d | 2015-02-20 A | 2015-02-20 A |  | 100% |  |  |  | Facu | 8h | 8h |
| 294 | 22.2.5 | Actualizar BD con tabla de ganadores | milestone, manual | 1d | 2015-02-23 A | 2015-02-23 A |  | 100% |  |  |  | Paula | 8h | 8h |
| 295 | 22.2.6 | Correcciones en estadisticas index | milestone, manual | 1d | 2015-02-25 A | 2015-02-25 A |  | 100% |  |  |  | Florencia | 8h | 8h |
| 296 | 22.2.7 | Diseñar pagina fiche del partido | milestone, manual | 1d | 2015-02-26 A | 2015-02-26 A |  | 100% |  |  |  | Facu | 8h | 8h |
| 297 | 22.2.8 | Agregar nombres a fechas eliminatorias | milestone, manual | 1d | 2015-02-24 A | 2015-02-24 A |  | 100% |  |  |  | Florencia | 8h | 8h |
| 298 | 22.2.9 | Registrar equipos en siguientes llaves | milestone, manual | 2d | 2015-02-25 A | 2015-02-26 A |  | 100% |  |  |  | Florencia | 16h | 16h |
| 299 | 22.2.10 | Correcciones en css | milestone, manual | 1d | 2015-02-25 A | 2015-02-25 A |  | 100% |  |  |  | Facu | 8h | 8h |
| 300 | 22.2.11 | Cambiar rutas relativas por absolutas | milestone, manual | 1d | 2015-02-25 A | 2015-02-25 A |  | 100% |  |  |  | Facu | 8h | 8h |
| 301 | 22.2.12 | Correcion bug sanciones | milestone, manual | 1d | 2015-02-26 A | 2015-02-26 A |  | 100% |  |  |  | Paula | 8h | 8h |
| 302 | 22.2.13 | Despliegue en servidor web para pruebas | milestone, manual | 1d | 2015-03-03 A | 2015-03-03 A |  | 100% |  |  |  | Facu | 8h | 8h |
| 303 | 22.2.14 | Corrección en la eliminación de ediciones | milestone, manual | 1d | 2015-02-20 A | 2015-02-20 A |  | 100% |  |  |  | Paula | 8h | 8h |
| 304 | 22.2.15 | Correcion en el Index | milestone, manual | 1d | 2015-03-03 A | 2015-03-03 A |  | 100% |  |  |  | Facu | 8h | 8h |
| 305 | 22.2.16 | Correccion en metodos javascript para cerrar fase | milestone, manual | 1d | 2015-03-03 A | 2015-03-03 A |  | 100% |  |  |  | Antonio | 8h | 8h |
| 306 | 22.2.17 | Ordenamiento en tabla de posiciones | milestone, manual | 1d | 2015-03-09 A | 2015-03-09 A |  | 100% |  |  |  | Paula | 8h | 8h |
| 307 | 22.2.18 | Registrar partido tercer puesto | milestone, manual | 1d | 2015-03-09 A | 2015-03-09 A |  | 100% |  |  |  | Florencia | 8h | 8h |
| 308 | 22.2.19 | Correccion de bugs cerrar fase | milestone, manual | 1d | 2015-03-09 A | 2015-03-09 A |  | 100% |  |  |  | Antonio | 8h | 8h |
| 309 | 22.3 | Actualización y control de la base de datos | milestone, manual | 1d? | 2015-02-20 | 2015-02-20 |  | 100% | 2015-03-10 | 2015-03-10 |  | Paula | 8h | 8h |

| ID | WBS | Task | Type | Duration | Start | Finish | Predecessors | Complete | Actual start | Actual finish | Resources | Work | Actual work |
| --- | --- | --- | --- | --- | --- | --- | --- | --- | --- | --- | --- | --- | --- |
| 310 | 22.4 | **Diseño de Estadisticas** |  | 1d? | 2014-05-03 | 2014-05-03 |  | 100% | 2015-02-25 | 2015-02-25 |  | 8h | 8h |
| 311 | 22.4.1 | Estadistica Tarjetas | milestone, manual | 1d | 2015-02-25 A | 2015-02-25 A |  | 100% |  |  | Paula | 8h | 8h |
| 312 | 22.5 | **Cerrar Fase** |  | 1d? | 2015-02-20 | 2015-02-20 |  | 100% | 2015-02-26 | 2015-03-10 |  | 24h | 24h |
| 313 | 22.5.1 | Actualizacions en Cerrar fase | milestone, manual | 1d | 2015-02-26 A | 2015-02-26 A |  | 100% |  |  | Antonio | 8h | 8h |
| 314 | 22.5.2 | Agregar cerrar face eliminatoria | milestone, manual | 1d | 2015-02-26 A | 2015-02-26 A |  | 100% |  |  | Antonio | 8h | 8h |
| 315 | 22.5.3 | Agregar boton para expandir y minimizar fases | milestone, manual | 1d | 2015-03-10 A | 2015-03-10 A |  | 100% |  |  | Antonio | 8h | 8h |
| 316 | 22.6 | **Adaptación a Mobile** |  | 10d | 2015-03-03 A | 2015-03-12 A |  | 100% |  |  |  | 224h | 224h |
| 317 | 22.6.1 | Index | milestone, manual | 1d | 2015-03-03 A | 2015-03-03 A |  | 100% |  |  | Facu | 8h | 8h |
| 318 | 22.6.2 | Menu | milestone, manual | 1d | 2015-03-03 A | 2015-03-03 A |  | 100% |  |  | Facu | 8h | 8h |
| 319 | 22.6.3 | Arbitros | milestone, manual | 1d | 2015-03-04 A | 2015-03-04 A |  | 100% |  |  | Facu | 8h | 8h |
| 320 | 22.6.4 | Canchas | milestone, manual | 1d | 2015-03-04 A | 2015-03-04 A |  | 100% |  |  | Facu | 8h | 8h |
| 321 | 22.6.5 | Ediciones | milestone, manual | 1d | 2015-03-06 A | 2015-03-06 A |  | 100% |  |  | Facu | 8h | 8h |
| 322 | 22.6.6 | Equipos | milestone, manual | 1d | 2015-03-06 A | 2015-03-06 A |  | 100% |  |  | Facu | 8h | 8h |
| 323 | 22.6.7 | Jugadores | milestone, manual | 1d | 2015-03-09 A | 2015-03-09 A |  | 100% |  |  | Facu | 8h | 8h |
| 324 | 22.6.8 | torneos | milestone, manual | 1d | 2015-03-09 A | 2015-03-09 A |  | 100% |  |  | Facu | 8h | 8h |
| 325 | 22.6.9 | Modificar Usuario | milestone, manual | 1d | 2015-03-09 A | 2015-03-09 A |  | 100% |  |  | Facu | 8h | 8h |
| 326 | 22.6.10 | Noticias | milestone, manual | 1d | 2015-03-09 A | 2015-03-09 A |  | 100% |  |  | Facu | 8h | 8h |
| 327 | 22.6.11 | Sanciones | milestone, manual | 1d | 2015-03-09 A | 2015-03-09 A |  | 100% |  |  | Facu | 8h | 8h |
| 328 | 22.6.12 | Fechas | milestone, manual | 7d | 2015-03-06 A | 2015-03-12 A |  | 100% |  |  | Facu | 56h | 56h |
| 329 | 22.6.13 | Pagina maestra y estilos css | milestone, manual | 10d | 2015-03-03 A | 2015-03-12 A |  | 100% |  |  | Facu | 80h | 80h |
| 330 | 22.7 | Realizar casos de prueba | milestone, manual | 1d | 2015-03-03 A | 2015-03-03 A |  | 100% |  |  |  |  |  |
| 331 | 22.8 | Correr Casos de prueba | milestone, manual | 1d | 2015-03-03 A | 2015-03-03 A |  | 100% |  |  |  |  |  |
| 332 | 23 | Realizar reunión retrospectiva | milestone, manual | 1d | 2015-02-20 A | 2015-02-20 A |  | 100% |  |  |  |  |  |
| 333 | 24 | **Sprint 12** |  | 21d | 2015-03-13 | 2015-04-02 | 332FS+95.57d | 100% | 2015-03-12 | 2015-04-01 |  | 728h | 728h |
| 334 | 24.1 | Realizar Sprint Planning | milestone, manual | 1d | 2015-03-12 A | 2015-03-12 A |  | 100% |  |  | Antonio; Facu; Florencia; Paula | 32h | 32h |

| ID | WBS | Task | Type | Duration | Start | Finish | Complete | Actual start | Actual finish | Resources | Work | Actual work |
| --- | --- | --- | --- | --- | --- | --- | --- | --- | --- | --- | --- | --- |
| 335 | 24.2 | **Portal de Noticias** |  | 1d? | 2015-03-13 A | 2015-03-13 | 100% |  | 2015-03-17 |  | 40h | 40h |
| 336 | 24.2.1 | Rediseñar pantallas | milestone, manual | 4d | 2015-03-13 A | 2015-03-16 A | 100% |  |  | Florencia | 32h | 32h |
| 337 | 24.2.2 | Agregar editor de texto a la noticia | milestone, manual | 1d | 2015-03-17 A | 2015-03-17 A | 100% |  |  | Facu | 8h | 8h |
| 338 | 24.3 | **Tareas de soporte** |  | 1d? | 2015-03-13 A | 2015-03-13 | 100% |  | 2015-04-01 |  | 88h | 88h |
| 339 | 24.3.1 | Error en partidos libres | milestone, manual | 1d | 2015-03-13 A | 2015-03-13 A | 100% |  |  | Florencia | 8h | 8h |
| 340 | 24.3.2 | Bug de modal para finalizar edicion | milestone, manual | 1d | 2015-03-31 A | 2015-03-31 A | 100% |  |  | Antonio | 8h | 8h |
| 341 | 24.3.3 | **Modulo Estadisticas** |  | 1d? | 2015-03-13 | 2015-03-13 | 100% | 2015-03-25 | 2015-04-01 |  | 72h | 72h |
| 342 | 24.3.3.1 | Versus de equipos | milestone, manual | 2d | 2015-03-25 A | 2015-03-26 A | 100% |  |  | Paula; Florencia | 16h | 16h |
| 343 | 24.3.3.2 | Estadisticas Equipo | milestone, manual | 2d | 2015-03-26 A | 2015-03-27 A | 100% |  |  | Paula; Florencia | 16h | 16h |
| 344 | 24.3.3.3 | Ultimos partidos de un equipo | milestone, manual | 2d | 2015-03-26 A | 2015-03-27 A | 100% |  |  | Paula; Florencia | 16h | 16h |
| 345 | 24.3.3.4 | Goleadores de un Equipo | milestone, manual | 1d | 2015-03-25 A | 2015-03-25 A | 100% |  |  | Paula; Florencia | 8h | 8h |
| 346 | 24.3.3.5 | Goleadores Edicion | milestone, manual | 1d | 2015-03-25 A | 2015-03-25 A | 100% |  |  | Paula; Florencia | 8h | 8h |
| 347 | 24.3.3.6 | Estadisticas jugador | milestone, manual | 1d | 2015-04-01 A | 2015-04-01 A | 100% |  |  | Paula; Florencia | 8h | 8h |
| 348 | 24.4 | **Modulo de Consulta WEB** |  | 19d | 2015-03-13 A | 2015-03-31 | 100% |  | 2015-04-01 |  | 416h | 416h |
| 349 | 24.4.1 | Diseño de interfaces | milestone, manual | 15d | 2015-03-13 A | 2015-03-27 A | 100% |  |  | Facu | 120h | 120h |
| 350 | 24.4.2 | Definicions de conjunto de estilos | milestone, manual | 15d | 2015-03-13 A | 2015-03-27 A | 100% |  |  | Facu | 120h | 120h |
| 351 | 24.4.3 | integrar interfaces al proyecto | milestone, manual | 5d | 2015-03-27 A | 2015-03-31 A | 100% |  |  | Facu | 40h | 40h |
| 352 | 24.4.4 | Desarrollar funcionalidad por cada pantalla | milestone, manual | 12d | 2015-03-20 A | 2015-03-31 A | 100% |  |  | Florencia | 96h | 96h |
| 353 | 24.4.5 | Adaptación a mobile | milestone, manual | 1d | 2015-03-31 A | 2015-03-31 A | 100% |  |  | Facu | 8h | 8h |
| 354 | 24.4.6 | Ficha de Partido | milestone, manual | 3d | 2015-03-30 A | 2015-04-01 A | 100% |  |  | Facu | 24h | 24h |
| 355 | 24.4.7 | Testing | milestone, manual | 1d | 2015-03-13 A | 2015-03-13 A | 100% |  |  | Paula | 8h | 8h |
| 356 | 24.5 | **Modulo de personalización de estilo y look and feel del torneo** |  | 1d? | 2015-03-13 | 2015-03-13 | 100% | 2015-03-17 | 2015-03-31 |  | 152h | 152h |
| 357 | 24.5.1 | Defnición de plantilla | milestone, manual | 4d | 2015-03-17 A | 2015-03-20 A | 100% |  |  | Antonio | 32h | 32h |
| 358 | 24.5.2 | Desarrollo | milestone, manual | 12d | 2015-03-20 A | 2015-03-31 A | 100% |  |  | Antonio | 96h | 96h |
| 359 | 24.5.3 | Actualización en Base de Datos | milestone, manual | 1d | 2015-03-27 A | 2015-03-27 A | 100% |  |  | Antonio | 8h | 8h |
| 360 | 24.5.4 | Testing | milestone, manual | 1d | 2015-03-31 A | 2015-03-31 A | 100% |  |  | Antonio; Paula | 16h | 16h |
| 361 | 25 | Realizar reunión retrospectiva | milestone, manual | 1d | 2015-04-01 A | 2015-04-01 A | 100% |  |  | Antonio; Facu; Florencia; Paula | 32h | 32h |

| ID | WBS | Task | Type | Duration | Start | Finish | Predecessors | Complete | Actual start | Actual finish | Resources | Work | Actual work |
| --- | --- | --- | --- | --- | --- | --- | --- | --- | --- | --- | --- | --- | --- |
| 362 | 26 | **Sprint 13** |  | 21d | 2015-04-03 A | 2015-04-23 A | 361FS+95.57d | 100% |  |  |  | 1880h | 1880h |
| 363 | 26.1 | Realizar Sprint Planning | milestone, manual | 1d | 2015-04-07 A | 2015-04-07 A |  | 100% |  |  | Antonio; Facu; Florencia; Paula | 32h | 32h |
| 364 | 26.2 | **Investigación URL rewriting** |  | 13d | 2015-04-08 A | 2015-04-20 A |  | 100% |  |  | Antonio | 176h | 176h |
| 365 | 26.2.1 | implementación de ejemplo | milestone, manual | 2d | 2015-04-13 A | 2015-04-14 A |  | 100% |  |  | Antonio | 16h | 16h |
| 366 | 26.2.2 | incorporar en el proyecto | milestone, manual | 1d | 2015-04-14 A | 2015-04-14 A |  | 100% |  |  | Antonio | 8h | 8h |
| 367 | 26.2.3 | Definir todas las reglas de URL | milestone, manual | 6d | 2015-04-15 A | 2015-04-20 A |  | 100% |  |  | Antonio | 48h | 48h |
| 368 | 26.3 | **Modulo de personalización de estilo y look and feel del torneo** |  | 4d | 2015-04-04 A | 2015-04-07 A |  | 100% |  |  |  | 160h | 160h |
| 369 | 26.3.1 | Definición de formato de la página | milestone, manual | 4d | 2015-04-04 A | 2015-04-07 A |  | 100% |  |  | Facu; Antonio | 56h | 56h |
| 370 | 26.3.2 | Configuración de patrones y colores del Header | milestone, manual | 4d | 2015-04-04 A | 2015-04-07 A |  | 100% |  |  | Facu | 32h | 32h |
| 371 | 26.3.3 | Creación de los temas | milestone, manual | 4d | 2015-04-04 A | 2015-04-07 A |  | 100% |  |  | Facu | 32h | 32h |
| 372 | 26.3.4 | Restringir opciones de configuración al administrador | milestone, manual | 4d | 2015-04-04 A | 2015-04-07 A |  | 100% |  |  | Antonio | 32h | 32h |
| 373 | 26.3.5 | Guardar configuración visual del torneo | milestone, manual | 1d | 2015-04-04 A | 2015-04-04 A |  | 100% |  |  | Antonio | 8h | 8h |
| 374 | 26.4 | **Modulo Torneo - consulta Web** |  | 1d? | 2015-04-03 A | 2015-04-03 |  | 100% |  | 2015-04-23 |  | 1352h | 1352h |
| 375 | 26.4.1 | **Ficha del Partido** |  | 1d? | 2015-04-03 A | 2015-04-03 |  | 100% |  | 2015-04-09 |  | 496h | 496h |
| 376 | 26.4.1.1 | Diseño de interfaz | milestone, manual | 2d | 2015-04-08 A | 2015-04-09 A |  | 100% |  |  | Facu | 16h | 16h |
| 377 | 26.4.1.2 | **Desarrollar funcionalidad de pantalla** |  | 5d | 2015-04-03 A | 2015-04-07 A |  | 100% |  |  |  | 480h | 480h |
| 378 | 26.4.1.2.1 | Información partido: resultado, árbitro, cancha, estado | milestone, manual | 5d | 2015-04-03 A | 2015-04-07 A |  | 100% |  |  | Florencia; Paula | 80h | 80h |
| 379 | 26.4.1.2.2 | Resumen de partido: goles, cambios, tarjetas, sanciones | milestone, manual | 5d | 2015-04-03 A | 2015-04-07 A |  | 100% |  |  | Florencia; Paula | 80h | 80h |
| 380 | 26.4.1.2.3 | Próximos partidos de un equipo | milestone, manual | 5d | 2015-04-03 A | 2015-04-07 A |  | 100% |  |  | Florencia; Paula | 80h | 80h |
| 381 | 26.4.1.2.4 | Últimos partidos de un equipo | milestone, manual | 5d | 2015-04-03 A | 2015-04-07 A |  | 100% |  |  | Florencia; Paula | 80h | 80h |
| 382 | 26.4.1.2.5 | Versus entre equipos | milestone, manual | 5d | 2015-04-03 A | 2015-04-07 A |  | 100% |  |  | Florencia; Paula | 80h | 80h |
| 383 | 26.4.1.2.6 | Otros partidos de una fecha | milestone, manual | 5d | 2015-04-03 A | 2015-04-07 A |  | 100% |  |  | Florencia; Paula | 80h | 80h |
| 384 | 26.4.2 | **Estadisticas Equipo** |  | 1d? | 2015-04-03 | 2015-04-03 |  | 100% | 2015-04-08 | 2015-04-12 |  | 496h | 496h |
| 385 | 26.4.2.1 | Diseño interfaz | milestone, manual | 2d | 2015-04-10 A | 2015-04-11 A |  | 100% |  |  | Facu | 16h | 16h |

| ID | WBS | Task | Type | Duration | Start | Finish | Complete | Actual start | Actual finish | Constraint | Resources | Work | Actual work |
| --- | --- | --- | --- | --- | --- | --- | --- | --- | --- | --- | --- | --- | --- |
| 386 | 26.4.2.2 | **Agregar funcionalidad a pantalla** |  | 5d | 2015-04-08 A | 2015-04-12 A | 100% |  |  |  |  | 480h | 480h |
| 387 | 26.4.2.2.1 | Información de equipos: datos equipos, estadísticas: puntos, goles a favor, goles en contra, partidos jugados | milestone, manual | 5d | 2015-04-08 A | 2015-04-12 A | 100% |  |  |  | Florencia; Paula | 80h | 80h |
| 388 | 26.4.2.2.2 | Información de equipos: jugadores de equipo | milestone, manual | 5d | 2015-04-08 A | 2015-04-12 A | 100% |  |  |  | Florencia; Paula | 80h | 80h |
| 389 | 26.4.2.2.3 | Resumen de equipo: PJ, PG, PE, Goles | milestone, manual | 5d | 2015-04-08 A | 2015-04-12 A | 100% |  |  |  | Florencia; Paula | 80h | 80h |
| 390 | 26.4.2.2.4 | Últimos partidos de un equipo | milestone, manual | 5d | 2015-04-08 A | 2015-04-12 A | 100% |  |  |  | Florencia; Paula | 80h | 80h |
| 391 | 26.4.2.2.5 | Historial de partidos de equipos | milestone, manual | 5d | 2015-04-08 A | 2015-04-12 A | 100% |  |  |  | Florencia; Paula | 80h | 80h |
| 392 | 26.4.2.2.6 | Gráficos | milestone, manual | 5d | 2015-04-08 A | 2015-04-12 A | 100% |  |  |  | Florencia; Paula | 80h | 80h |
| 393 | 26.4.3 | **Estadisticas Jugador** |  | 1d? | 2015-04-03 | 2015-04-03 | 100% | 2015-04-13 | 2015-04-20 |  |  | 344h | 344h |
| 394 | 26.4.3.1 | Diseño Interfaz | milestone, manual | 3d | 2015-04-13 A | 2015-04-15 A | 100% |  |  |  | Facu | 24h | 24h |
| 395 | 26.4.3.2 | **Agregar funcionalidad a pantalla** |  | 5d | 2015-04-16 A | 2015-04-20 A | 100% |  |  |  |  | 320h | 320h |
| 396 | 26.4.3.2.1 | Información de jugador: datos jugador, PJ, Goles convertidos, TA, TR | milestone, manual | 5d | 2015-04-16 A | 2015-04-20 A | 100% |  |  |  | Florencia; Paula | 80h | 80h |
| 397 | 26.4.3.2.2 | Historial de partidos de jugador | milestone, manual | 5d | 2015-04-16 A | 2015-04-20 A | 100% |  |  |  | Florencia; Paula | 80h | 80h |
| 398 | 26.4.3.2.3 | Jugadores de equipos | milestone, manual | 5d | 2015-04-16 A | 2015-04-20 A | 100% |  |  |  | Florencia; Paula | 80h | 80h |
| 399 | 26.4.3.2.4 | Gráficos | milestone, manual | 5d | 2015-04-16 A | 2015-04-20 A | 100% |  |  |  | Florencia; Paula | 80h | 80h |
| 400 | 26.4.4 | Realizar casos de prueba | milestone, manual | 1d? | 2015-04-03 | 2015-04-03 | 100% | 2015-04-22 | 2015-04-22 | start no earlier than 2015-04-22 | Paula | 8h | 8h |
| 401 | 26.4.5 | Testing | milestone, manual | 1d | 2015-04-23 A | 2015-04-23 A | 100% |  |  |  | Paula | 8h | 8h |
| 402 | 26.5 | **Correción de bugs** |  | 4d | 2015-04-20 A | 2015-04-23 A | 100% |  |  |  |  | 160h | 160h |
| 403 | 26.5.1 | Corrección de los fondos | milestone, manual | 4d | 2015-04-20 A | 2015-04-23 A | 100% |  |  |  | Facu | 32h | 32h |
| 404 | 26.5.2 | Estadísticas de Árbitro | milestone, manual | 4d | 2015-04-20 A | 2015-04-23 A | 100% |  |  |  | Paula | 32h | 32h |
| 405 | 26.5.3 | Estilos css | milestone, manual | 4d | 2015-04-20 A | 2015-04-23 A | 100% |  |  |  | Facu | 32h | 32h |
| 406 | 26.5.4 | Correciones en Themes y bodyClass | milestone, manual | 4d | 2015-04-20 A | 2015-04-23 A | 100% |  |  |  | Facu | 32h | 32h |
| 407 | 26.5.5 | Correcciones en Equipos | milestone, manual | 4d | 2015-04-20 A | 2015-04-23 A | 100% |  |  |  | Paula | 32h | 32h |
| 408 | 27 | Actualización del Manual de Usuario | milestone, manual | 3d | 2015-04-21 A | 2015-04-23 A | 100% |  |  |  | Paula | 24h | 24h |
| 409 | 28 | Realizar reunión retrospectiva | milestone, manual | 1d | 2015-04-23 A | 2015-04-23 A | 100% |  |  |  | Antonio; Facu; Florencia; Paula | 32h | 32h |

| ID | WBS | Task | Type | Duration | Start | Finish | Predecessors | Complete | Actual start | Actual finish | Resources | Work | Actual work |
| --- | --- | --- | --- | --- | --- | --- | --- | --- | --- | --- | --- | --- | --- |
| 410 | 29 | **Sprint 14** |  | 21d | 2015-04-24 A | 2015-05-14 A | 409FS+95.57d | 100% |  |  |  | 880h | 880h |
| 411 | 29.1 | Realizar Sprint Planning | milestone, manual | 1d | 2015-04-24 A | 2015-04-24 A |  | 100% |  |  | Antonio; Facu; Florencia; Paula | 32h | 32h |
| 412 | 29.2 | **Módulo Torneo - Consulta Web** |  | 20d? | 2015-04-24 | 2015-05-13 |  | 100% | 2015-04-25 | 2015-05-11 |  | 496h | 496h |
| 413 | 29.2.1 | **Goleadores** |  | 1d? | 2015-04-24 | 2015-04-24 |  | 100% | 2015-04-25 | 2015-04-27 |  | 80h | 80h |
| 414 | 29.2.1.1 | Diseño de interfaz | milestone, manual | 1d | 2015-04-25 A | 2015-04-25 A |  | 100% |  |  | Antonio | 8h | 8h |
| 415 | 29.2.1.2 | Agregar métodos y funcionalidad desde el servidor | milestone, manual | 1d | 2015-04-26 A | 2015-04-26 A |  | 100% |  |  | Paula | 8h | 8h |
| 416 | 29.2.1.3 | **Widget Goleadores de la Edición** |  | 2d | 2015-04-26 A | 2015-04-27 A |  | 100% |  |  |  | 64h | 64h |
| 417 | 29.2.1.3.1 | Goleadores de cada Fase de la edición | milestone, manual | 2d | 2015-04-26 A | 2015-04-27 A |  | 100% |  |  | Paula | 16h | 16h |
| 418 | 29.2.1.3.2 | Cantidad de Goles por Equipo | milestone, manual | 2d | 2015-04-26 A | 2015-04-27 A |  | 100% |  |  | Paula | 16h | 16h |
| 419 | 29.2.1.3.3 | Cantidad de Goles por Tipo de Gol | milestone, manual | 2d | 2015-04-26 A | 2015-04-27 A |  | 100% |  |  | Paula | 16h | 16h |
| 420 | 29.2.1.3.4 | Gráficos | milestone, manual | 2d | 2015-04-26 A | 2015-04-27 A |  | 100% |  |  | Paula | 16h | 16h |
| 421 | 29.2.2 | **Fechas** |  | 5d | 2015-04-28 A | 2015-05-02 A |  | 100% |  |  |  | 48h | 48h |
| 422 | 29.2.2.1 | Diseño de Interfaz | milestone, manual | 3d | 2015-04-28 A | 2015-04-30 A |  | 100% |  |  | Facu | 24h | 24h |
| 423 | 29.2.2.2 | Dar funcionalidad a pantalla | milestone, manual | 3d | 2015-04-30 A | 2015-05-02 A |  | 100% |  |  | Florencia | 24h | 24h |
| 424 | 29.2.3 | **Torneos y Ediciones** |  | 3d | 2015-05-03 A | 2015-05-05 A |  | 100% |  |  |  | 72h | 72h |
| 425 | 29.2.3.1 | Diseño de Interfaz | milestone, manual | 3d | 2015-05-03 A | 2015-05-05 A |  | 100% |  |  | Antonio | 24h | 24h |
| 426 | 29.2.3.2 | Dar funcionalidad a pantalla | milestone, manual | 3d | 2015-05-03 A | 2015-05-05 A |  | 100% |  |  | Florencia; Paula | 48h | 48h |
| 427 | 29.2.4 | **Estadísticas principales de la edición** |  | 4d | 2015-05-06 A | 2015-05-09 A |  | 100% |  |  |  | 96h | 96h |
| 428 | 29.2.4.1 | Diseño de Interfaz | milestone, manual | 4d | 2015-05-06 A | 2015-05-09 A |  | 100% |  |  | Facu | 32h | 32h |
| 429 | 29.2.4.2 | Dar funcionalidad a pantalla | milestone, manual | 4d | 2015-05-06 A | 2015-05-09 A |  | 100% |  |  | Florencia; Paula | 64h | 64h |
| 430 | 29.2.5 | **Miscelaneas** |  | 2d | 2015-05-09 A | 2015-05-10 A |  | 100% |  |  |  | 80h | 80h |
| 431 | 29.2.5.1 | Diseño de Interfaz | milestone, manual | 2d | 2015-05-09 A | 2015-05-10 A |  | 100% |  |  | Antonio | 16h | 16h |
| 432 | 29.2.5.2 | Valla menos vencida | milestone, manual | 2d | 2015-05-09 A | 2015-05-10 A |  | 100% |  |  | Paula | 16h | 16h |
| 433 | 29.2.5.3 | Ranking Fair Play | milestone, manual | 2d | 2015-05-09 A | 2015-05-10 A |  | 100% |  |  | Paula | 16h | 16h |
| 434 | 29.2.5.4 | Árbitros de la Edición/Torneo | milestone, manual | 2d | 2015-05-09 A | 2015-05-10 A |  | 100% |  |  | Paula | 16h | 16h |
| 435 | 29.2.5.5 | Canchas de la Edición/Torneo | milestone, manual | 2d | 2015-05-09 A | 2015-05-10 A |  | 100% |  |  | Paula | 16h | 16h |

| ID | WBS | Task | Type | Duration | Start | Finish | Complete | Resources | Work | Actual work |
| --- | --- | --- | --- | --- | --- | --- | --- | --- | --- | --- |
| 436 | 29.2.6 | **Modulo de Portal de noticias** |  | 3d | 2015-05-09 A | 2015-05-11 A | 100% |  | 120h | 120h |
| 437 | 29.2.6.1 | Diseño interfaz | milestone, manual | 3d | 2015-05-09 A | 2015-05-11 A | 100% | Antonio; Florencia | 48h | 48h |
| 438 | 29.2.6.2 | Desarrollo | milestone, manual | 3d | 2015-05-09 A | 2015-05-11 A | 100% | Florencia; Antonio | 48h | 48h |
| 439 | 29.2.6.3 | Testing | milestone, manual | 3d | 2015-05-09 A | 2015-05-11 A | 100% | Paula | 24h | 24h |
| 440 | 29.3 | Testing Prueba de funcionalidad completa | milestone, manual | 1d | 2015-05-11 A | 2015-05-11 A | 100% | Antonio; Facu; Florencia; Paula | 32h | 32h |
| 441 | 29.4 | Correción de bugs | milestone, manual | 2d | 2015-05-12 A | 2015-05-13 A | 100% | Antonio; Facu; Florencia; Paula | 64h | 64h |
| 442 | 29.5 | Preparación del script de datos | milestone, manual | 4d | 2015-05-09 A | 2015-05-12 A | 100% | Paula | 32h | 32h |
| 443 | 29.6 | Despliegue del Sistema | milestone, manual | 5d | 2015-05-10 A | 2015-05-14 A | 100% | Facu | 40h | 40h |
| 444 | 29.7 | Actualización documentos de producto | milestone, manual | 11d | 2015-04-30 A | 2015-05-10 A | 100% | Florencia; Paula | 176h | 176h |
| 445 | 29.8 | Actualización del Manual de Usuario | milestone, manual | 1d | 2015-05-11 A | 2015-05-11 A | 100% | Paula | 8h | 8h |
| 446 | 30 | Realizar reunión retrospectiva | milestone, manual | 1d | 2015-05-15 A | 2015-05-15 A | 100% | Antonio; Facu; Florencia; Paula | 32h | 32h |
| 447 | 31 | Preparación de Presentación Final | milestone, manual | 11d | 2015-05-15 A | 2015-05-25 A | 100% | Antonio; Facu; Florencia; Paula | 352h | 352h |
